# 任务21

Schedule from MS Project, 2020-10-26 to 2020-12-31, costs in ¥.

## Calendars

- 标准: Mon-Fri 08:00-12:00, 13:00-17:00; Sat-Sun off.

## Resources

| Resource | Rate | Cost per use |
| --- | --- | --- |
| 项目经理 | 50 |  |
| UI专家 | 40 |  |
| 设计专家 | 40 |  |
| 需求专家 | 40 |  |
| 程序员1 | 45 |  |
| 程序员2 | 45 |  |
| 测试员1 | 40 |  |
| 测试员2 | 40 |  |
| 质量专家 | 40 |  |
| 纸张 | 40 | 1 |
| 电脑1 | 10 | 10 |
| 打印机 | 2 | 2 |
| 电脑2 | 10 | 10 |
| 储备资金 |  |  |
| 租金 |  |  |
| 间接成本 |  |  |

## Schedule

| ID | WBS | Task | Type | Duration | Start | Finish | Predecessors | Resources | Work | Cost | 间接成本 |
| --- | --- | --- | --- | --- | --- | --- | --- | --- | --- | --- | --- |
| 1 | 1 | **启动** |  | 5d | 2020-10-26 | 2020-10-30 |  | 储备资金 [0.1%]; 间接成本 [0.1%] | 80h | 5,165 | ¥400 |
| 2 | 1.1 | 组件核心团队 | manual | 1d | 2020-10-26 | 2020-10-26 |  | UI专家; 测试员1; 设计专家; 项目经理; 需求专家 | 40h | 1,780 |  |
| 3 | 1.2 | 干系人分析 | manual | 1d | 2020-10-27 | 2020-10-27 |  | 项目经理 | 8h | 400 |  |
| 4 | 1.3 | 里程碑计划 | manual | 1d | 2020-10-28 | 2020-10-28 |  | 项目经理 | 8h | 400 |  |
| 5 | 1.4 | 制定项目章程 | manual | 1d | 2020-10-29 | 2020-10-29 | 2, 3, 4 | 项目经理; 打印机; 电脑1; 纸张 | 8h | 465 |  |
| 6 | 1.5 | 项目启动大会 | manual | 1d | 2020-10-30 | 2020-10-30 | 5 | 项目经理; 需求专家 | 16h | 820 |  |
| 7 | 2 | **规划** |  | 19d | 2020-10-31 | 2020-11-25 |  | 储备资金 [0.1%]; 间接成本 [0.1%] | 184h | 14,565 | ¥1100 |
| 8 | 2.1 | **规划范围** |  | 5d | 2020-10-31 | 2020-11-05 |  |  | 56h | 2,945 |  |
| 9 | 2.1.1 | 制定需求说明书 | manual | 1d | 2020-10-31 | 2020-10-31 | 6 | 需求专家; 打印机; 纸张 | 8h | 465 |  |
| 10 | 2.1.2 | 界面设计 | manual | 1d | 2020-11-02 | 2020-11-02 | 9 | UI专家; 测试员1 | 16h | 640 |  |
| 11 | 2.1.3 | 详细设计说明书 | manual | 1d | 2020-11-02 | 2020-11-02 | 9 | 设计专家 | 8h | 320 |  |
| 12 | 2.1.4 | 项目范围说明书 | manual | 1d | 2020-11-03 | 2020-11-03 | 9 | 项目经理 | 8h | 400 |  |
| 13 | 2.1.5 | 创建WBS | manual | 1d | 2020-11-04 | 2020-11-04 | 10, 11, 12 | 项目经理; 电脑1 | 8h | 520 |  |
| 14 | 2.1.6 | 形成范围基准 | manual | 1d | 2020-11-05 | 2020-11-05 | 13 | 项目经理 | 8h | 500 |  |
| 15 | 2.2 | **规划时间** |  | 5d | 2020-11-06 | 2020-11-12 |  |  | 40h | 2,320 |  |
| 16 | 2.2.1 | 排列工作包顺序 | manual | 1d | 2020-11-06 | 2020-11-06 | 14 | 项目经理; 电脑1 | 8h | 520 |  |
| 17 | 2.2.2 | 估算资源 | manual | 1d | 2020-11-07 | 2020-11-07 |  | 项目经理 | 8h | 500 |  |
| 18 | 2.2.3 | 估算持续时间 | manual | 1d | 2020-11-09 | 2020-11-09 | 17 | 项目经理 | 8h | 400 |  |
| 19 | 2.2.4 | 制定进度计划 | manual | 1d | 2020-11-10 | 2020-11-10 | 18 | 项目经理 | 8h | 400 |  |
| 20 | 2.2.5 | 形成进度基准 | manual | 1d | 2020-11-11 | 2020-11-11 | 19 | 项目经理 | 8h | 400 |  |
| 21 | 2.3 | **规划成本** |  | 3d | 2020-11-12 | 2020-11-16 |  |  | 24h | 1,600 |  |
| 22 | 2.3.1 | 项目成本估算 | manual | 1d | 2020-11-12 | 2020-11-12 | 20 | 项目经理 | 8h | 500 |  |
| 23 | 2.3.2 | 项目预算 | manual | 1d | 2020-11-13 | 2020-11-13 | 22 | 项目经理 | 8h | 500 |  |
| 24 | 2.3.3 | 形成范围基准 | manual | 1d | 2020-11-16 | 2020-11-16 | 23 | 项目经理 | 8h | 500 |  |

| ID | WBS | Task | Type | Duration | Start | Finish | Predecessors | Total slack | Constraint | Resources | Work | Cost | 间接成本 |
| --- | --- | --- | --- | --- | --- | --- | --- | --- | --- | --- | --- | --- | --- |
| 25 | 2.4 | **规划质量** |  | 2d | 2020-11-17 | 2020-11-18 |  |  |  |  | 16h | 980 |  |
| 26 | 2.4.1 | 制定测试计划 | manual | 1d | 2020-11-17 | 2020-11-17 | 14 |  |  | 质量专家; 电脑1 | 8h | 440 |  |
| 27 | 2.4.2 | 制定测试用例 | manual | 1d | 2020-11-18 | 2020-11-18 | 26 |  |  | 质量专家; 电脑1 | 8h | 440 |  |
| 28 | 2.5 | **规划人力资源** |  | 2d | 2020-11-19 | 2020-11-20 |  |  |  |  | 16h | 1,100 |  |
| 29 | 2.5.1 | 制定人力资源计划 | manual | 1d | 2020-11-19 | 2020-11-19 | 17 |  |  | 项目经理 | 8h | 500 |  |
| 30 | 2.5.2 | 制定人员配备管理计划 | manual | 1d | 2020-11-20 | 2020-11-20 | 29 |  |  | 项目经理 | 8h | 500 |  |
| 31 | 2.6 | **规划沟通** |  | 1d | 2020-11-21 | 2020-11-21 |  |  |  |  | 8h | 620 |  |
| 32 | 2.6.1 | 制定沟通管理计划 | manual | 1d | 2020-11-21 | 2020-11-21 | 30 |  |  | 项目经理; 电脑1 | 8h | 520 |  |
| 33 | 2.7 | **规划风险** |  | 3d | 2020-11-22 | 2020-11-24 |  |  |  |  | 24h | 1,500 |  |
| 34 | 2.7.1 | 识别风险 | manual | 1d | 2020-11-22 | 2020-11-22 | 15, 21, 25, 28 |  |  | 项目经理 | 8h | 500 |  |
| 35 | 2.7.2 | 风险分析 | manual | 1d | 2020-11-23 | 2020-11-23 | 34 |  |  | 项目经理 | 8h | 500 |  |
| 36 | 2.7.3 | 制定风险登记册 | manual | 1d | 2020-11-24 | 2020-11-24 | 35 |  |  | 项目经理 | 8h | 400 |  |
| 37 | 3 | 规划整合 |  | 1d | 2020-11-25 | 2020-11-25 | 36 | 26d | start no earlier than 2020-11-25 | 项目经理; 电脑1 | 8h | 620 |  |
| 38 | 4 | **执行与监控** |  | 26d | 2020-11-26 | 2020-12-31 |  |  |  | 储备资金 [0.1%]; 间接成本 [0.1%] | 968h | 61,320 | ¥4700 |
| 39 | 4.1 | 组建项目团队 | manual | 1d | 2020-11-26 | 2020-11-26 | 7 |  |  | UI专家; 测试员1; 测试员2; 程序员1; 程序员2; 设计专家; 项目经理; 需求专家; 质量专家; 电脑1 | 72h | 3,160 |  |
| 40 | 4.2 | **项目执行** |  | 17d | 2020-11-27 | 2020-12-21 |  |  |  |  | 208h | 12,400 |  |
| 41 | 4.2.1 | **读取文件模块** |  | 1d | 2020-11-27 | 2020-11-27 |  |  |  |  | 16h | 1,060 |  |
| 42 | 4.2.1.1 | 连接监控设备，获取实时视频数据 | manual | 1d | 2020-11-27 | 2020-11-27 | 39 |  |  | 程序员1; 电脑1 | 8h | 480 |  |
| 43 | 4.2.1.2 | 对视频处理获取对应帧数的图片 | manual | 1d | 2020-11-27 | 2020-11-27 | 39 |  |  | 程序员1; 电脑1 | 8h | 480 |  |
| 44 | 4.2.2 | **获取人脸特征模块** |  | 3d | 2020-11-30 | 2020-12-02 |  |  |  |  | 24h | 1,540 |  |
| 45 | 4.2.2.1 | 识别目标视频中驾驶员人脸 | manual | 1d | 2020-11-30 | 2020-11-30 | 43 |  |  | 程序员1; 电脑1 | 8h | 480 |  |
| 46 | 4.2.2.2 | 标注出人脸特征 | manual | 1d | 2020-12-01 | 2020-12-01 | 45 |  |  | 程序员1; 电脑1 | 8h | 480 |  |
| 47 | 4.2.2.3 | 捕获主要特征 | manual | 1d | 2020-12-02 | 2020-12-02 | 46 |  |  | 程序员1; 电脑1 | 8h | 480 |  |
| 48 | 4.2.3 | **疲劳驾驶行为模块** |  | 7d | 2020-12-03 | 2020-12-11 |  |  |  |  | 56h | 3,540 |  |
| 49 | 4.2.3.1 | **计算特征值模块** |  | 4d | 2020-12-03 | 2020-12-08 |  |  |  |  | 32h | 1,900 |  |
| 50 | 4.2.3.1.1 | 计算人眼张合度 | manual | 2d | 2020-12-03 | 2020-12-04 | 46 |  |  | 程序员2; 电脑2 | 16h | 840 |  |
| 51 | 4.2.3.1.2 | 计算嘴巴张合度 | manual | 1d | 2020-12-07 | 2020-12-07 | 46 |  |  | 程序员2; 电脑2 | 8h | 480 |  |
| 52 | 4.2.3.1.3 | 计算头部偏移度 | manual | 1d | 2020-12-08 | 2020-12-08 | 46 |  |  | 程序员2; 电脑2 | 8h | 480 |  |

| ID | WBS | Task | Type | Duration | Start | Finish | Predecessors | Total slack | Resources | Work | Cost |
| --- | --- | --- | --- | --- | --- | --- | --- | --- | --- | --- | --- |
| 53 | 4.2.3.2 | **判断疲劳模块** |  | 3d | 2020-12-09 | 2020-12-11 |  |  |  | 24h | 1,540 |
| 54 | 4.2.3.2.1 | 判断眼部是否疲劳 | manual | 1d | 2020-12-09 | 2020-12-09 | 50 |  | 程序员2; 电脑2 | 8h | 480 |
| 55 | 4.2.3.2.2 | 判断是否打哈欠 | manual | 1d | 2020-12-10 | 2020-12-10 | 51 |  | 程序员2; 电脑2 | 8h | 480 |
| 56 | 4.2.3.2.3 | 判断是否打瞌睡 | manual | 1d | 2020-12-11 | 2020-12-11 |  |  | 程序员2; 电脑2 | 8h | 480 |
| 57 | 4.2.4 | **危险驾驶行为模块** |  | 12d | 2020-12-03 | 2020-12-18 |  |  |  | 96h | 5,100 |
| 58 | 4.2.4.1 | **监测驾驶专注模块** |  | 4d | 2020-12-03 | 2020-12-08 |  |  |  | 32h | 1,780 |
| 59 | 4.2.4.1.1 | 获取视线偏移度 | manual | 2d | 2020-12-03 | 2020-12-04 | 47 |  | 程序员1; 电脑2 | 16h | 840 |
| 60 | 4.2.4.1.2 | 判断是否玩手机 | manual | 2d | 2020-12-07 | 2020-12-08 | 47, 59 |  | 程序员1; 电脑2 | 16h | 840 |
| 61 | 4.2.4.2 | **监测不规范驾驶行为模块** |  | 8d | 2020-12-09 | 2020-12-18 |  |  |  | 64h | 3,220 |
| 62 | 4.2.4.2.1 | 判断是否吸烟 | manual | 4d | 2020-12-09 | 2020-12-14 | 47, 45 |  | 程序员2; 电脑1 | 32h | 1,560 |
| 63 | 4.2.4.2.2 | 判断是否系用安全带 | manual | 4d | 2020-12-15 | 2020-12-18 | 42, 43, 39 |  | 程序员2; 电脑1 | 32h | 1,560 |
| 64 | 4.2.5 | **预警提示模块** |  | 1d | 2020-12-21 | 2020-12-21 |  |  |  | 16h | 1,060 |
| 65 | 4.2.5.1 | 提示疲劳驾驶 | manual | 1d | 2020-12-14 | 2020-12-14 | 48 |  | 程序员1; 电脑1 | 8h | 480 |
| 66 | 4.2.5.2 | 提示危险驾驶 | manual | 1d | 2020-12-21 | 2020-12-21 | 57 |  | 程序员1; 电脑1 | 8h | 480 |
| 67 | 4.3 | **项目集成模块** |  | 1d | 2020-12-22 | 2020-12-22 |  |  |  | 16h | 960 |
| 68 | 4.3.1 | 集成所有模块功能 | manual | 1d | 2020-12-22 | 2020-12-22 | 40 |  | 程序员1; 程序员2; 电脑1; 电脑2 | 16h | 860 |
| 69 | 4.4 | **项目监控** |  | 4d | 2020-12-23 | 2020-12-28 |  |  |  | 152h | 7,240 |
| 70 | 4.4.1 | 疲劳驾驶监测指标监控 | manual | 1d | 2020-12-23 | 2020-12-23 | 39 |  | 测试员1; 项目经理 | 16h | 820 |
| 71 | 4.4.2 | 危险驾驶监测指标监控 | manual | 1d | 2020-12-23 | 2020-12-23 | 39 |  | 测试员2; 项目经理 | 16h | 820 |
| 72 | 4.4.3 | 预警性能指标监控 | manual | 1d | 2020-12-23 | 2020-12-23 | 39 |  | 测试员1; 项目经理 | 16h | 820 |
| 73 | 4.4.4 | 监控评审 | manual | 1d | 2020-12-24 | 2020-12-24 | 72 |  | 设计专家; 项目经理 | 16h | 820 |
| 74 | 4.4.5 | 变更评审 | manual | 1d | 2020-12-25 | 2020-12-25 | 73 |  | 设计专家; 项目经理 | 16h | 820 |
| 75 | 4.4.6 | 例会 | manual | 1d | 2020-11-27 | 2020-11-27 | 39 |  | UI专家; 测试员1; 测试员2; 程序员1; 程序员2; 设计专家; 项目经理; 需求专家; 质量专家 | 72h | 3,040 |
| 76 | 4.5 | **管理干系人** |  | 1d | 2020-11-27 | 2020-11-27 |  | 0d |  | 24h | 1,600 |
| 77 | 4.5.1 | 发布项目信息 | manual | 1d | 2020-11-27 | 2020-11-27 | 39 |  | 项目经理 | 8h | 500 |
| 78 | 4.5.2 | 报告监控指标 | manual | 1d | 2020-11-27 | 2020-11-27 | 39 |  | 项目经理 | 8h | 500 |
| 79 | 4.5.3 | 干系人沟通 | manual | 1d | 2020-11-27 | 2020-11-27 | 39 |  | 项目经理 | 8h | 500 |

| ID | WBS | Task | Type | Duration | Start | Finish | Predecessors | Total slack | Resources | Work | Cost | 间接成本 |
| --- | --- | --- | --- | --- | --- | --- | --- | --- | --- | --- | --- | --- |
| 80 | 4.6 | **团队建设** |  | 5d | 2020-11-27 | 2020-12-03 |  | 0d |  | 440h | 18,960 |  |
| 81 | 4.6.1 | 算法学习 | manual | 5d | 2020-11-27 | 2020-12-03 | 39 |  | UI专家; 测试员1; 测试员2; 程序员1; 程序员2 | 200h | 8,500 |  |
| 82 | 4.6.2 | 培训 | manual | 2d | 2020-11-27 | 2020-11-30 | 39 |  | UI专家; 测试员1; 测试员2; 程序员1; 设计专家; 需求专家; 质量专家 | 112h | 4,660 |  |
| 83 | 4.6.3 | 沟通 | manual | 1d | 2020-11-27 | 2020-11-27 | 39 |  | UI专家; 测试员1; 程序员1; 设计专家; 项目经理; 需求专家; 质量专家 | 56h | 2,360 |  |
| 84 | 4.6.4 | 集合活动 | manual | 1d | 2020-11-27 | 2020-11-27 | 39 |  | UI专家; 测试员1; 测试员2; 程序员1; 程序员2; 设计专家; 项目经理; 需求专家; 质量专家 | 72h | 3,340 |  |
| 85 | 4.7 | 硬件配置 | manual | 1d | 2020-11-27 | 2020-11-27 | 39 |  | 项目经理 | 8h | 700 |  |
| 86 | 4.8 | 项目验收 | manual | 1d | 2020-12-22 | 2020-12-22 | 40 |  | UI专家; 测试员1; 测试员2; 设计专家; 项目经理; 需求专家 | 48h | 2,100 |  |
| 87 | 5 | **收尾** |  | 1d | 2020-12-23 | 2020-12-23 |  | 0d | 储备资金 [0.1%]; 间接成本 [0.1%] | 80h | 4,740 | ¥360 |
| 88 | 5.1 | 项目终验 | manual | 1d | 2020-12-23 | 2020-12-23 | 86 |  | UI专家; 设计专家; 项目经理; 需求专家 | 32h | 1,460 |  |
| 89 | 5.2 | 项目内部收尾 | manual | 1d | 2020-12-23 | 2020-12-23 | 86 |  | UI专家; 测试员1; 测试员2; 程序员1; 程序员2; 设计专家 | 48h | 2,100 |  |
